# NCICBSecurityService

Schedule from MS Project, 2004-08-02 to 2005-03-07, A marks actual dates.
Home

## Calendars

- Standard: Mon-Fri 08:00-12:00, 13:00-17:00; Sat-Sun off.

## Resources

| Resource |
| --- |
| Vinay |
| Resource 1 |
| Brian |
| Kalpesh |
| Kunal |
| Eric |
| Charles |
| Team |

## Schedule

| ID | WBS | Task | Duration | Start | Finish | Predecessors | Complete | Remaining | Total slack | Free slack | Constraint | Resources | Work | Actual work |
| --- | --- | --- | --- | --- | --- | --- | --- | --- | --- | --- | --- | --- | --- | --- |
| 1 | 1 | **Security Module (Release One)** | 156d? | 2004-08-02 A | 2005-03-07 |  | 35% | 102.03d? | 0d |  |  |  | 7492h | 1935.54h |
| 2 | 1.1 | **Inception** | 38d | 2004-08-02 A | 2004-09-22 A |  | 100% |  |  |  |  |  | 512h | 512h |
| 3 | 1.1.1 | Phase I Evaluation | 7d | 2004-08-02 A | 2004-08-10 A |  | 100% |  |  |  | start no earlier than 2004-08-02 | Vinay; Brian | 112h | 112h |
| 4 | 1.1.2 | Interview NCICB Team Leads | 12d | 2004-08-09 A | 2004-08-24 A |  | 100% |  |  |  | start no earlier than 2004-08-09 | Vinay; Brian | 192h | 192h |
| 5 | 1.1.3 | Scope and Vision Document | 10d | 2004-08-30 A | 2004-09-10 A |  | 100% |  |  |  | start no earlier than 2004-08-30 | Brian | 80h | 80h |
| 6 | 1.1.4 | Supplentary Specifications | 3d | 2004-09-01 A | 2004-09-03 A | 4 | 100% |  |  |  | start no earlier than 2004-09-01 | Vinay | 24h | 24h |
| 7 | 1.1.5 | Fuctional Specifications | 5d | 2004-09-06 A | 2004-09-10 A | 6 | 100% |  |  |  |  | Vinay | 40h | 40h |
| 8 | 1.1.6 | Use Case Model | 5d | 2004-09-13 A | 2004-09-17 A | 7 | 100% |  |  |  |  | Vinay | 40h | 40h |
| 9 | 1.1.7 | Identify Risk List | 3d | 2004-09-20 A | 2004-09-22 A | 8 | 100% |  |  |  |  | Kalpesh | 24h | 24h |
| 10 | 1.2 | **Elaboration** | 23d? | 2004-09-27 A | 2004-10-27 |  | 78% | 5.09d? | 93d |  |  |  | 452h | 316h |
| 11 | 1.2.1 | **Iteration I** | 13d | 2004-09-27 A | 2004-10-13 |  | 92% | 1.08d | 103d |  |  |  | 152h | 148h |
| 12 | 1.2.1.1 | Level 1 - 2 Use Cases | 5d | 2004-09-27 A | 2004-10-01 A |  | 100% |  |  |  |  | Vinay | 40h | 40h |
| 13 | 1.2.1.2 | Risk List Priority | 3d | 2004-09-27 A | 2004-09-29 A |  | 100% |  |  |  |  | Vinay | 24h | 24h |
| 14 | 1.2.1.3 | Detailed Iteration Release Plan | 5d | 2004-09-27 A | 2004-10-01 |  | 95% | 0.25d | 111d |  |  | Vinay; Brian | 80h | 76h |
| 15 | 1.2.1.4 | **Finalize Requirements** | 9d | 2004-10-01 A | 2004-10-13 |  | 50% | 4.5d | 103d |  |  |  | 8h | 8h |
| 16 | 1.2.1.4.1 | Stakeholder Sign Off | 1d | 2004-10-01 | 2004-10-01 |  |  |  | 111d |  | start no earlier than 2004-10-01 |  |  |  |
| 17 | 1.2.1.4.2 | User Working Group Review | 1d | 2004-10-13 A | 2004-10-13 A | 16 | 100% |  |  |  | start no earlier than 2004-10-13 | Vinay | 8h | 8h |
| 18 | 1.2.2 | **Iteration II** | 17d? | 2004-10-05 A | 2004-10-27 |  | 68% | 5.53d? | 93d |  |  |  | 300h | 168h |
| 19 | 1.2.2.1 | Develop Architecture Prototype | 3d | 2004-10-25 A | 2004-10-27 A |  | 100% |  |  |  | start no earlier than 2004-10-25 |  |  |  |
| 20 | 1.2.2.2 | Software Architecture Document | 15d | 2004-10-05 A | 2004-10-25 |  | 70% | 4.5d | 94d | 0d | finish no earlier than 2004-10-25 | Vinay; Kunal; Eric | 276h | 168h |
| 21 | 1.2.2.3 | Architecture Review | 1d? | 2004-10-26 | 2004-10-26 | 20 |  |  | 94d |  |  | Brian; Kalpesh | 16h |  |
| 22 | 1.2.2.4 | Prioritize Risk List | 1d | 2004-10-26 | 2004-10-26 |  |  |  | 94d |  | start no earlier than 2004-10-26 | Vinay | 8h |  |
| 23 | 1.3 | Phase Review | 1d? | 2004-09-27 | 2004-09-27 |  |  |  | 115d |  |  | Eric; Kalpesh | 16h |  |
| 24 | 1.4 | **Construction** | 88d | 2004-10-18 A | 2005-02-16 |  | 24% | 67.16d | 13d |  |  |  | 6128h | 1107.54h |
| 25 | 1.4.1 | **Iteration I** | 19d | 2004-10-26 A | 2004-11-19 |  | 77% | 4.4d | 76d |  |  |  | 328h | 260h |
| 26 | 1.4.1.1 | Iteration Plan | 1d | 2004-10-26 | 2004-10-26 |  |  |  | 94d |  | start no earlier than 2004-10-26 | Vinay; Kunal | 16h |  |

| ID | WBS | Task | Duration | Start | Finish | Predecessors | Complete | Remaining | Total slack | Free slack | Constraint | Resources | Work | Actual work |
| --- | --- | --- | --- | --- | --- | --- | --- | --- | --- | --- | --- | --- | --- | --- |
| 27 | 1.4.1.2 | **Authentication** | 18d | 2004-10-27 A | 2004-11-19 |  | 79% | 3.71d | 76d |  |  |  | 312h | 260h |
| 28 | 1.4.1.2.1 | **Design** | 4d | 2004-10-27 A | 2004-11-01 |  | 63% | 1.5d | 90d |  |  |  | 56h | 36h |
| 29 | 1.4.1.2.1.1 | **Documentation** | 4d | 2004-10-27 A | 2004-11-01 |  | 63% | 1.5d | 90d |  |  |  | 56h | 36h |
| 30 | 1.4.1.2.1.1.1 | Level 3 - 4 Use Cases | 0.5d | 2004-10-27 A | 2004-10-27 |  | 50% | 0.25d | 93.5d |  | start no earlier than 2004-10-27 | Kunal; Vinay | 8h | 4h |
| 31 | 1.4.1.2.1.1.2 | Use Case Model | 0.5d | 2004-10-27 A | 2004-10-27 A | 30 | 100% |  |  |  | start no earlier than 2004-10-27 | Vinay; Kunal | 8h | 8h |
| 32 | 1.4.1.2.1.1.3 | Working Group Use Case Review | 1d | 2004-10-28 A | 2004-10-28 A | 31 | 100% |  |  |  |  | Kalpesh | 8h | 8h |
| 33 | 1.4.1.2.1.1.4 | UML Sequence Diagram | 1d | 2004-10-29 | 2004-10-29 | 32 |  |  | 91d |  |  | Kunal | 8h |  |
| 34 | 1.4.1.2.1.1.5 | UML Class Diagram | 1d | 2004-11-01 A | 2004-11-01 A | 33 | 100% |  |  |  |  | Vinay | 8h | 8h |
| 35 | 1.4.1.2.1.1.6 | UML Activity Diagram | 1d | 2004-10-29 | 2004-10-29 |  |  |  | 91d |  | start no earlier than 2004-10-29 | Vinay | 8h |  |
| 36 | 1.4.1.2.1.1.7 | Design Review | 1d | 2004-11-01 A | 2004-11-01 A | 35 | 100% |  |  |  |  | Brian | 8h | 8h |
| 37 | 1.4.1.2.2 | **Implementation** | 11d | 2004-11-01 A | 2004-11-15 |  | 80% | 2.16d | 80d |  |  |  | 208h | 176h |
| 38 | 1.4.1.2.2.1 | Data Model Enhancement | 5d | 2004-11-01 A | 2004-11-05 A |  | 100% |  |  |  | start no earlier than 2004-11-01 | Vinay; Kalpesh | 80h | 80h |
| 39 | 1.4.1.2.2.2 | Data Model Documentation with Examples | 1d | 2004-11-08 A | 2004-11-08 A |  | 100% |  |  |  | start no earlier than 2004-11-08 | Vinay | 8h | 8h |
| 40 | 1.4.1.2.2.3 | **JAAS Authentication Modules** | 10d | 2004-11-02 A | 2004-11-15 |  | 72% | 2.79d | 80d |  |  |  | 120h | 88h |
| 41 | 1.4.1.2.2.3.1 | LDAP | 5d | 2004-11-02 A | 2004-11-08 A | 36 | 100% |  |  |  | start no earlier than 2004-11-02 | Kunal | 40h | 40h |
| 42 | 1.4.1.2.2.3.2 | RBDMS | 5d | 2004-11-08 A | 2004-11-12 A | 36 | 100% |  |  |  | finish no earlier than 2004-11-12 | Vinay | 40h | 40h |
| 43 | 1.4.1.2.2.3.3 | Junit Test Development | 4d | 2004-11-09 | 2004-11-12 |  |  |  | 81d |  | finish no earlier than 2004-11-12 | Eric | 32h |  |
| 44 | 1.4.1.2.2.3.4 | Code Reviews | 0.33d | 2004-11-15 A | 2004-11-15 A | 41, 42, 43 | 100% |  |  |  | finish no earlier than 2004-11-15 | Brian; Kalpesh; Charles | 8h | 8h |
| 45 | 1.4.1.2.3 | **Unit Testing** | 4d | 2004-11-16 A | 2004-11-19 A |  | 100% |  |  |  |  |  | 48h | 48h |
| 46 | 1.4.1.2.3.1 | Perform Testing | 1d | 2004-11-16 A | 2004-11-16 A | 44 | 100% |  |  |  | start no earlier than 2004-11-15 | Kunal | 8h | 8h |
| 47 | 1.4.1.2.3.2 | Evaluate Results | 1d | 2004-11-17 A | 2004-11-17 A | 46 | 100% |  |  |  | start no earlier than 2004-11-16 | Eric; Vinay; Kunal | 24h | 24h |
| 48 | 1.4.1.2.3.3 | Integration Testing | 1d | 2004-11-18 A | 2004-11-18 A | 47 | 100% |  |  |  |  | Eric | 8h | 8h |
| 49 | 1.4.1.2.3.4 | User Working Group Review (SAD, Design Models) | 1d | 2004-11-19 A | 2004-11-19 A | 48 | 100% |  |  |  |  | Kalpesh | 8h | 8h |
| 50 | 1.4.2 | **Iteration II** | 44d | 2004-11-23 A | 2005-01-21 |  | 30% | 30.59d | 26d | 0d |  |  | 896h | 120h |
| 51 | 1.4.2.1 | Iteration Plan | 1d | 2004-11-30 | 2004-11-30 |  |  |  | 64d |  | start no earlier than 2004-11-30 | Vinay | 8h |  |

| ID | WBS | Task | Duration | Start | Finish | Predecessors | Complete | Remaining | Total slack | Free slack | Constraint | Resources | Work | Actual work |
| --- | --- | --- | --- | --- | --- | --- | --- | --- | --- | --- | --- | --- | --- | --- |
| 52 | 1.4.2.2 | **Authorization** | 44d | 2004-11-23 A | 2005-01-21 |  | 31% | 30.33d | 26d |  |  |  | 888h | 120h |
| 53 | 1.4.2.2.1 | **Design** | 6d | 2004-12-01 A | 2004-12-08 A |  | 100% |  |  |  |  |  | 64h | 64h |
| 54 | 1.4.2.2.1.1 | **Documentation** | 6d | 2004-12-01 A | 2004-12-08 A |  | 100% |  |  |  |  |  | 64h | 64h |
| 55 | 1.4.2.2.1.1.1 | Level 3 - 4 Use Cases | 1d | 2004-12-01 A | 2004-12-01 A |  | 100% |  |  |  | start no earlier than 2004-12-01 | Vinay; Kunal | 16h | 16h |
| 56 | 1.4.2.2.1.1.2 | Use Case Model | 1d | 2004-12-01 A | 2004-12-01 A | 51 | 100% |  |  |  | start no earlier than 2004-11-22 | Kunal | 8h | 8h |
| 57 | 1.4.2.2.1.1.3 | User Working Group Review | 1d | 2004-12-02 A | 2004-12-02 A | 56 | 100% |  |  |  |  | Kalpesh | 8h | 8h |
| 58 | 1.4.2.2.1.1.4 | UML Sequence Diagram | 1d | 2004-12-03 A | 2004-12-03 A | 57 | 100% |  |  |  |  | Kunal | 8h | 8h |
| 59 | 1.4.2.2.1.1.5 | UML Class Diagram | 1d | 2004-12-06 A | 2004-12-06 A | 58 | 100% |  |  |  |  | Vinay | 8h | 8h |
| 60 | 1.4.2.2.1.1.6 | UML Activity Diagram | 1d | 2004-12-06 A | 2004-12-06 A |  | 100% |  |  |  | start no earlier than 2004-12-06 | Vinay | 8h | 8h |
| 61 | 1.4.2.2.1.1.7 | Design Review | 1d | 2004-12-07 A | 2004-12-07 A | 60 | 100% |  |  |  |  | Brian | 8h | 8h |
| 62 | 1.4.2.2.1.1.8 | UML Model for EVS | 2d | 2004-12-07 A | 2004-12-08 A |  | 100% |  |  |  | start no earlier than 2004-12-07 |  |  |  |
| 63 | 1.4.2.2.2 | **Implementation** | 22d | 2004-11-23 A | 2004-12-22 |  | 19% | 17.78d | 48d |  |  |  | 768h | 56h |
| 64 | 1.4.2.2.2.1 | Authorization XML Schema | 10d | 2004-12-09 | 2004-12-22 |  |  |  | 48d |  | start no earlier than 2004-12-09 | Vinay; Brian | 160h |  |
| 65 | 1.4.2.2.2.2 | **Authorization API** | 22d | 2004-11-23 A | 2004-12-22 |  | 26% | 16.19d | 48d |  |  |  | 608h | 56h |
| 66 | 1.4.2.2.2.2.1 | Enhance Phase I Object Model | 7d | 2004-11-23 A | 2004-12-01 A | 38 | 100% |  |  |  | start no earlier than 2004-12-23 | Vinay | 56h | 56h |
| 67 | 1.4.2.2.2.2.2 | **develop run time API** | 15d | 2004-12-02 | 2004-12-22 | 66 |  |  | 48d |  |  | Brian; Vinay | 552h |  |
| 68 | 1.4.2.2.2.2.2.1 | Implement AuthorizationManager Interface | 15d | 2004-12-02 | 2004-12-22 |  |  |  | 48d |  | finish no earlier than 2004-12-22 | Brian; Vinay | 240h |  |
| 69 | 1.4.2.2.2.2.2.2 | Junit Test Development | 4.5d | 2004-12-16 | 2004-12-22 |  |  |  | 48d |  | finish no earlier than 2004-12-22 | Brian; Vinay | 72h |  |
| 70 | 1.4.2.2.3 | **Unit Testing** | 6d | 2005-01-14 | 2005-01-21 |  |  |  | 26d |  |  |  | 56h |  |
| 71 | 1.4.2.2.3.1 | Unit Testing | 2d | 2005-01-14 | 2005-01-17 |  |  |  | 26d | 0d | start no earlier than 2005-01-14 | Eric | 16h |  |
| 72 | 1.4.2.2.3.2 | Review Integration Test Plan | 1d | 2005-01-18 | 2005-01-18 | 71 |  |  | 26d | 0d |  | Team | 8h |  |
| 73 | 1.4.2.2.3.3 | Evaluate Results | 1d | 2005-01-19 | 2005-01-19 | 72 |  |  | 26d | 0d |  | Vinay; Eric | 16h |  |
| 74 | 1.4.2.2.3.4 | Integration Testing | 1d | 2005-01-20 | 2005-01-20 | 73 |  |  | 26d | 0d |  | Vinay | 8h |  |
| 75 | 1.4.2.2.3.5 | User Working Group Review | 1d | 2005-01-21 | 2005-01-21 | 74 |  |  | 26d |  |  | Kalpesh | 8h |  |

| ID | WBS | Task | Duration | Start | Finish | Predecessors | Complete | Remaining | Total slack | Free slack | Constraint | Resources | Work | Actual work |
| --- | --- | --- | --- | --- | --- | --- | --- | --- | --- | --- | --- | --- | --- | --- |
| 76 | 1.4.3 | **Iteration III** | 29d | 2004-12-21 | 2005-01-28 |  |  |  | 26d |  |  |  | 208h |  |
| 77 | 1.4.3.1 | Iteration Plan | 1d | 2004-12-21 | 2004-12-21 |  |  |  | 39d | 0d | start no earlier than 2004-12-21 | Kunal | 8h |  |
| 78 | 1.4.3.2 | **Prototype (Reference Implementation)** | 28d | 2004-12-22 | 2005-01-28 |  |  |  | 26d |  |  |  | 200h |  |
| 79 | 1.4.3.2.1 | **Implementation** | 28d | 2004-12-22 | 2005-01-28 |  |  |  | 26d |  |  |  | 160h |  |
| 80 | 1.4.3.2.1.1 | **Demo Application** | 28d | 2004-12-22 | 2005-01-28 |  |  |  | 26d |  |  |  | 160h |  |
| 81 | 1.4.3.2.1.1.1 | Integrate Authentication | 5d | 2004-12-22 | 2004-12-28 | 77 |  |  | 39d | 0d | start no earlier than 2004-12-22 | Kunal | 40h |  |
| 82 | 1.4.3.2.1.1.2 | User Interface | 10d | 2004-12-29 | 2005-01-11 | 81 |  |  | 39d |  |  | Eric | 80h |  |
| 83 | 1.4.3.2.1.1.3 | Integrate Authorization | 5d | 2005-01-24 | 2005-01-28 | 50 |  |  | 26d |  |  | Kunal | 40h |  |
| 84 | 1.4.3.2.2 | **Documentation** | 5d | 2005-01-19 | 2005-01-25 |  |  |  | 29d |  |  |  | 40h |  |
| 85 | 1.4.3.2.2.1 | User Guide | 5d | 2005-01-19 | 2005-01-25 |  |  |  | 29d |  | start no earlier than 2005-01-19 | Vinay | 40h |  |
| 86 | 1.4.4 | **Iteration IV** | 88d | 2004-10-18 A | 2005-02-16 |  | 14% | 75.89d | 13d |  |  | Brian | 4696h | 727.53h |
| 87 | 1.4.4.1 | Iteration Plan | 2d | 2004-10-18 | 2004-10-19 |  |  |  | 99d |  | start no earlier than 2004-10-18 | Brian | 16h |  |
| 88 | 1.4.4.2 | **User Provisioning** | 86d | 2004-10-20 A | 2005-02-16 |  | 14% | 74d | 13d |  |  | Brian | 3976h | 630.69h |
| 89 | 1.4.4.2.1 | **Design** | 27d | 2004-10-20 A | 2004-11-25 A |  | 100% |  |  |  |  | Brian | 504h | 504h |
| 90 | 1.4.4.2.1.1 | **Documentation** | 27d | 2004-10-20 A | 2004-11-25 A |  | 100% |  |  |  |  | Brian | 288h | 288h |
| 91 | 1.4.4.2.1.1.1 | Level 3 - 4 Use Cases | 1d | 2004-10-27 A | 2004-10-27 A | 87 | 100% |  |  |  | start no earlier than 2004-10-27 | Brian | 8h | 8h |
| 92 | 1.4.4.2.1.1.2 | Use Case Model | 6d | 2004-10-20 A | 2004-10-27 A | 87 | 100% |  |  |  | finish no earlier than 2004-10-27 | Brian | 48h | 48h |
| 93 | 1.4.4.2.1.1.3 | Gather Requirements | 5d | 2004-10-28 A | 2004-11-03 A | 92 | 100% |  |  |  |  |  |  |  |
| 94 | 1.4.4.2.1.1.4 | Create DDL for mysql | 1d | 2004-11-10 A | 2004-11-10 A |  | 100% |  |  |  | start no earlier than 2004-11-10 |  |  |  |
| 95 | 1.4.4.2.1.1.5 | Generate Hibernate Mappings | 1d | 2004-11-22 A | 2004-11-22 A | 94 | 100% |  |  |  |  |  |  |  |
| 96 | 1.4.4.2.1.1.6 | Generate Hibernate Mappings | 1d | 2004-11-23 A | 2004-11-23 A | 95 | 100% |  |  |  |  |  |  |  |
| 97 | 1.4.4.2.1.1.7 | UML Class Diagram | 1d | 2004-11-24 A | 2004-11-24 A | 96 | 100% |  |  |  |  | Brian | 8h | 8h |
| 98 | 1.4.4.2.1.1.8 | Design Review | 1d | 2004-11-25 A | 2004-11-25 A | 97 | 100% |  |  |  | finish no earlier than 2004-11-15 | Eric | 8h | 8h |
| 99 | 1.4.4.2.2 | **Implementation** | 28d | 2004-11-29 A | 2005-01-05 |  | 2% | 27.33d | 43d |  |  | Brian; Vinay | 2488h | 30.69h |
| 100 | 1.4.4.2.2.1 | Create Hibernate Mappings | 4d | 2004-12-03 | 2004-12-08 |  |  |  | 49.75d | 0d | start no earlier than 2004-12-03 | Brian; Vinay | 64h |  |
| 101 | 1.4.4.2.2.2 | Create Roles | 3.75d | 2004-11-29 A | 2004-12-10 | 100 | 67% | 1.25d | 49.75d | 0d | start no earlier than 2004-11-29 | Brian; Vinay | 40h | 20h |
| 102 | 1.4.4.2.2.3 | Modify Roles | 2.5d | 2004-12-10 | 2004-12-14 | 101 |  |  | 49.75d | 0d |  | Brian; Vinay | 40h |  |
| 103 | 1.4.4.2.2.4 | Create Privileges | 1.5d | 2004-12-14 | 2004-12-16 | 102 |  |  | 49.75d | 0d |  | Brian; Vinay | 24h |  |
| 104 | 1.4.4.2.2.5 | Modify Privileges | 1.5d | 2004-12-16 | 2004-12-17 | 103 |  |  | 49.75d | 0d |  | Brian; Vinay | 24h |  |
| 105 | 1.4.4.2.2.6 | Assign Privileges to Roles | 1.5d | 2004-12-17 | 2004-12-21 | 104 |  |  | 49.75d | 0d |  | Brian; Vinay | 24h |  |
| 106 | 1.4.4.2.2.7 | Create Protection Elements | 1d | 2004-12-21 | 2004-12-22 | 105 |  |  | 49.75d | 0d |  | Brian; Vinay | 16h |  |
| 107 | 1.4.4.2.2.8 | Modify Protection Elements | 1d | 2004-12-22 | 2004-12-23 | 106 |  |  | 49.75d | 0d |  | Brian; Vinay | 16h |  |
| 108 | 1.4.4.2.2.9 | Create Protection Group | 1d | 2004-12-23 | 2004-12-24 | 107 |  |  | 49.75d | 0d |  | Brian; Vinay | 16h |  |
| 109 | 1.4.4.2.2.10 | Modify Protection Group | 1d | 2004-12-24 | 2004-12-27 | 108 |  |  | 49.75d | 0d |  | Brian; Vinay | 16h |  |
| 110 | 1.4.4.2.2.11 | Assign Protection Elements to Groups | 1d | 2004-12-27 | 2004-12-28 | 109 |  |  | 49.75d |  |  | Brian; Vinay | 16h |  |
| 111 | 1.4.4.2.2.12 | Assign Protection Elements to Users | 1d | 2005-01-04 | 2005-01-04 |  |  |  | 43d | 0d | start no earlier than 2005-01-04 | Brian; Vinay | 16h |  |
| 112 | 1.4.4.2.2.13 | Assign Protection Group to User Roles | 1d | 2005-01-05 | 2005-01-05 | 111 |  |  | 43d |  |  | Brian; Vinay | 16h |  |

Notes:
- 82: Gap of a week exists. Evaluate again when Iteration 3 begins

| ID | WBS | Task | Duration | Start | Finish | Predecessors | Total slack | Free slack | Constraint | Resources | Work |
| --- | --- | --- | --- | --- | --- | --- | --- | --- | --- | --- | --- |
| 113 | 1.4.4.2.2.14 | **Struts Interface** | 24d | 2004-12-03 | 2005-01-05 |  | 43d |  |  | Kunal; Eric | 1344h |
| 114 | 1.4.4.2.2.14.1 | Design HTML/JSP Pages | 20d | 2004-12-03 | 2004-12-30 |  | 47d |  | start no earlier than 2004-12-03 | Kunal; Eric | 320h |
| 115 | 1.4.4.2.2.14.2 | Develop Struts Actions, Forms, Config | 20d | 2004-12-06 | 2004-12-31 |  | 43d | 0d | finish no earlier than 2004-12-31 | Kunal; Eric | 320h |
| 116 | 1.4.4.2.2.14.3 | Validation | 3d | 2005-01-03 | 2005-01-05 | 115 | 43d |  |  | Eric; Kunal | 48h |
| 117 | 1.4.4.2.2.14.4 | Junit Test Cases (Ongoing Task) | 17d | 2004-12-14 | 2005-01-05 |  | 43d |  | finish no earlier than 2005-01-05 | Kunal; Eric | 272h |
| 118 | 1.4.4.2.2.15 | Code Reviews (Onging Task) | 23d | 2004-12-06 | 2005-01-05 |  | 37d | 0d | finish no earlier than 2005-01-05 | Vinay; Brian | 368h |
| 119 | 1.4.4.2.3 | **Unit Testing** | 6d | 2005-01-06 | 2005-01-13 |  | 37d |  |  | Brian | 104h |
| 120 | 1.4.4.2.3.1 | Perform Testing | 3d | 2005-01-06 | 2005-01-10 | 118 | 37d | 0d | start no earlier than 2004-12-15 | Eric | 24h |
| 121 | 1.4.4.2.3.2 | Evaluate Results | 1d | 2005-01-11 | 2005-01-11 | 120 | 37d | 0d |  | Brian; Eric | 16h |
| 122 | 1.4.4.2.3.3 | Integration Testing | 1d | 2005-01-12 | 2005-01-12 | 121 | 37d | 0d |  | Brian | 8h |
| 123 | 1.4.4.2.3.4 | User Working Group Review | 1d | 2005-01-13 | 2005-01-13 | 122 | 37d |  |  | Brian | 8h |
| 124 | 1.4.4.2.4 | User Guide | 12d | 2005-02-01 | 2005-02-16 |  | 13d |  | start no earlier than 2005-02-01 | Brian; Eric | 192h |
| 125 | 1.5 | **Transition** | 41d | 2005-01-10 | 2005-03-07 |  | 0d |  |  |  | 384h |
| 126 | 1.5.1 | **Iteration I** | 21.5d | 2005-01-10 | 2005-02-08 |  | 19.5d |  |  |  | 296h |
| 127 | 1.5.1.1 | System Integration Document | 12d | 2005-01-10 | 2005-01-25 |  | 21d | 0d | start no earlier than 2005-01-10 | Vinay | 96h |
| 128 | 1.5.1.2 | caCore Technical Guide | 8d | 2005-01-26 | 2005-02-04 | 127 | 21d |  |  |  |  |
| 129 | 1.5.1.3 | **Integration Pilot (Release One)** | 19.5d | 2005-01-12 | 2005-02-08 |  | 19.5d |  |  |  | 200h |
| 130 | 1.5.1.3.1 | **Client Implementation** | 9d | 2005-01-12 | 2005-01-24 |  | 30d |  |  |  | 72h |
| 131 | 1.5.1.3.1.1 | Design | 2d | 2005-01-12 | 2005-01-13 |  | 30d | 0d | start no earlier than 2005-01-12 | Vinay | 16h |
| 132 | 1.5.1.3.1.2 | Development | 5d | 2005-01-14 | 2005-01-20 | 131 | 30d | 0d |  | Kunal | 40h |
| 133 | 1.5.1.3.1.3 | Testing | 2d | 2005-01-21 | 2005-01-24 | 132 | 30d |  |  | Kunal | 16h |
| 134 | 1.5.1.3.2 | Integration Testing | 5d | 2005-01-25 | 2005-01-31 |  | 19.5d | 0d | start no earlier than 2005-01-25 | Vinay; Eric | 80h |
| 135 | 1.5.1.3.3 | Evaluate Results | 0.5d | 2005-02-01 | 2005-02-01 | 134 | 19.5d | 0d |  | Vinay; Eric | 8h |
| 136 | 1.5.1.3.4 | Apply Needed Enhancements | 5d | 2005-02-01 | 2005-02-08 | 135 | 19.5d |  |  | Kunal | 40h |

| ID | WBS | Task | Duration | Start | Finish | Total slack | Constraint | Resources | Work |
| --- | --- | --- | --- | --- | --- | --- | --- | --- | --- |
| 137 | 1.5.2 | **Iteration II** | 7d | 2005-02-15 | 2005-02-23 | 8d |  |  | 88h |
| 138 | 1.5.2.1 | Staging | 5d | 2005-02-15 | 2005-02-21 | 10d | start no earlier than 2005-02-15 | Vinay | 40h |
| 139 | 1.5.2.2 | Testing | 3d | 2005-02-21 | 2005-02-23 | 8d | start no earlier than 2005-02-21 | Vinay; Eric | 48h |
| 140 | 1.5.3 | caCore Release 3 | 1d | 2005-03-07 | 2005-03-07 | 0d | start no earlier than 2005-03-07 |  |  |
